Schedule from MS Project, 2006-10-27 to 2006-12-21.

## Calendars

- Standard: Mon-Fri 08:00-12:00, 13:00-17:00; Sat-Sun off.

## Resources

| Resource | Rate |
| --- | --- |
| Isaac Newton | 66.63 |
| Lisa Simpson | 111 |
| Maurice Moss | 42 |
| Stephen Hawkins | 200 |
| Grace Hopper | 133.7 |

## Schedule

| ID | WBS | Task | Duration | Start | Finish | Predecessors | Total slack | Free slack | Work |
| --- | --- | --- | --- | --- | --- | --- | --- | --- | --- |
| 1 | 1 | **Spezifikationsphase** | 18d? | 2006-10-27 | 2006-11-21 |  | 0d |  | 160h |
| 2 | 1.1 | **Ist-Analyse** | 4d | 2006-10-27 | 2006-11-01 |  | 0d |  | 40h |
| 3 | 1.1.1 | Stakeholder-Interviews durchführen | 4d | 2006-10-27 | 2006-11-01 |  | 0d |  | 16h |
| 4 | 1.1.2 | Stakeholder-Analyse erstellen | 4d | 2006-10-27 | 2006-11-01 | 3SS | 0d |  | 16h |
| 5 | 1.1.3 | Ist-Anwendungsfall-Analyse erstellen | 2d | 2006-10-27 | 2006-10-30 |  | 2d |  | 8h |
| 6 | 1.2 | **Soll-Analyse** | 8d? | 2006-11-02 | 2006-11-13 | 2 | 0d |  | 60h |
| 7 | 1.2.1 | Anforderungsanalyse | 6d | 2006-11-06 | 2006-11-13 | 13FF+1d, 8SS | 0d |  | 12h |
| 8 | 1.2.2 | Anforderungsworkshop | 1d? | 2006-11-02 | 2006-11-02 |  | 0d |  | 8h |
| 9 | 1.2.3 | Anforderungsworkshop "Reservierungen" planen/durchführen | 1d? | 2006-11-03 | 2006-11-03 | 8 | 0d |  | 8h |
| 10 | 1.2.4 | Abstimmungsworkshop "Ankunft"planen/durchführen | 1d? | 2006-11-06 | 2006-11-06 | 9 | 0d |  | 8h |
| 11 | 1.2.5 | Abstimmungsworkshop "Aufenthalt"planen/durchführen | 1d? | 2006-11-07 | 2006-11-07 | 10 | 0d |  | 8h |
| 12 | 1.2.6 | Abstimmungsworkshop "Abreise" planen/durchführen | 1d? | 2006-11-08 | 2006-11-08 | 11 | 0d |  | 8h |
| 13 | 1.2.7 | Lastenheft erstellen | 2d | 2006-11-09 | 2006-11-10 | 12 | 0d |  | 8h |
| 14 | 1.3 | **Pflichtenheft** | 3d? | 2006-11-14 | 2006-11-16 | 6 | 0d |  | 44h |
| 15 | 1.3.1 | Fachliches Datenmodell erstellen | 1d? | 2006-11-14 | 2006-11-14 |  | 1d | 0d | 4h |
| 16 | 1.3.2 | Fachliche Architektur erstellen | 1d? | 2006-11-15 | 2006-11-15 | 15 | 1d |  | 4h |
| 17 | 1.3.3 | Geschäftsprozesse modellieren | 1d? | 2006-11-14 | 2006-11-14 |  | 1d | 0d | 8h |
| 18 | 1.3.4 | Anwendungsfälle modellieren | 1d? | 2006-11-15 | 2006-11-15 | 17 | 1d |  | 4h |
| 19 | 1.3.5 | Mockups erstellen | 1d? | 2006-11-14 | 2006-11-14 |  | 0d |  | 4h |
| 20 | 1.3.6 | Mockups mit dem Kunden abstimmen | 1d? | 2006-11-15 | 2006-11-15 | 19 | 0d |  | 4h |
| 21 | 1.3.7 | Dialoge spezifizieren | 1d? | 2006-11-16 | 2006-11-16 | 20 | 0d |  | 8h |
| 22 | 1.3.8 | Fachliche Testfälle definieren | 2d | 2006-11-14 | 2006-11-15 |  | 1d |  | 8h |
| 23 | 1.4 | Aufwandsschätzung durchführen | 1.5d? | 2006-11-17 | 2006-11-20 | 14 | 0d |  | 8h |
| 24 | 1.5 | Angebot schreiben | 1.5d? | 2006-11-20 | 2006-11-21 | 23 | 0d |  | 8h |

| ID | WBS | Task | Duration | Start | Finish | Predecessors | Total slack | Work |
| --- | --- | --- | --- | --- | --- | --- | --- | --- |
| 25 | 2 | **Entwurfsphase** | 8.5d? | 2006-11-22 | 2006-12-04 | 24 | 0d | 44h |
| 26 | 2.1 | ER-Diagramm | 3d | 2006-11-22 | 2006-11-24 |  | 0d | 16h |
| 27 | 2.2 | Komponentenmodell erstellen | 1d? | 2006-11-27 | 2006-11-27 | 26 | 0d | 4h |
| 28 | 2.3 | Komponenteninnensichten | 2d | 2006-11-28 | 2006-11-29 | 27 | 0d | 12h |
| 29 | 2.4 | Schnittestellen definieren | 1d? | 2006-11-30 | 2006-11-30 | 28 | 0d | 4h |
| 30 | 2.5 | UML-Sequenzdiagramm erstellen | 1.5d? | 2006-12-01 | 2006-12-04 | 29 | 0d | 8h |
| 31 | 3 | **Implementationsphase** | 2d? | 2006-12-04 | 2006-12-06 | 25 | 0d |  |
| 32 | 3.1 | Tests implementieren | 1d? | 2006-12-04 | 2006-12-05 |  | 0d |  |
| 33 | 3.2 | Kundenkomponente implementieren | 1d? | 2006-12-05 | 2006-12-06 | 32 | 11d |  |
| 34 | 3.3 | Mitarbeiterkomponente implementieren | 1d? | 2006-12-05 | 2006-12-06 | 32 | 11d |  |
| 35 | 3.4 | Reservierungskomponente implementieren | 1d? | 2006-12-05 | 2006-12-06 | 32 | 11d |  |
| 36 | 3.5 | Zimmerkomponente implementieren | 1d? | 2006-12-05 | 2006-12-06 | 32 | 11d |  |
| 37 | 3.6 | Buchhaltungskomponente implementieren | 1d? | 2006-12-05 | 2006-12-06 | 32 | 11d |  |
| 38 | 3.7 | Hotelsystem-Fassade implementieren | 1d? | 2006-12-05 | 2006-12-06 | 32 | 0d |  |
| 39 | 4 | **Testphase** | 11d? | 2006-12-06 | 2006-12-21 | 38 | 0d |  |
| 40 | 4.1 | Bugs fixen | 1d? | 2006-12-20 | 2006-12-21 | 46FF+5d | 0d |  |
| 41 | 4.2 | Modultests durchführen | 1d? | 2006-12-06 | 2006-12-07 |  | 0d |  |
| 42 | 4.3 | Komponententests durchführen | 1d? | 2006-12-07 | 2006-12-08 | 41 | 0d |  |
| 43 | 4.4 | Integrationstests durchführen | 1d? | 2006-12-08 | 2006-12-11 | 42 | 0d |  |
| 44 | 4.5 | Systemtestsdurchführen | 1d? | 2006-12-11 | 2006-12-12 | 43 | 0d |  |
| 45 | 4.6 | Verbundstests durchführen | 1d? | 2006-12-12 | 2006-12-13 | 44 | 0d |  |
| 46 | 4.7 | Abnahmetests durchführen | 1d? | 2006-12-13 | 2006-12-14 | 45 | 0d |  |
